# Plan de desarrollo de bintana-project

How a schedule from MS Project XML changed from version to version. A marks actual dates.

## Version 1 (saved 2026-09-23)

Note of the change: bintana-project: the plan of this project, made with the app

| ID | WBS | Task | Duration | Start | Finish | Predecessors | Complete | Constraint |
| --- | --- | --- | --- | --- | --- | --- | --- | --- |
| 1 |  | Desarrollo de bintana-project | 59d | 2026-08-24 | 2026-11-12 |  |  |  |
| 2 | 1 | **Fase 0 — Documento y harness** | 6d | 2026-08-24 | 2026-08-31 |  |  |  |
| 3 |  | Corpus MSPDI sintético (8 fixtures) | 3d | 2026-08-24 A | 2026-08-26 A |  | 100% |  |
| 4 |  | Harness de ida y vuelta | 2d | 2026-08-27 A | 2026-08-28 A | 3 | 100% |  |
| 5 |  | Arreglo upstream: clave UID 0 | 1d | 2026-08-31 A | 2026-08-31 A | 4 | 100% |  |
| 6 |  | Hito: round trip sin pérdidas |  | 2026-08-31 A | 2026-08-31 A | 5 | 100% |  |
| 7 | 2 | **Fase 1 — Editor mínimo** | 8d | 2026-09-01 | 2026-09-10 |  |  |  |
| 8 |  | Lectura, tabla WBS y Gantt | 3d | 2026-09-01 A | 2026-09-03 A | 6 | 100% |  |
| 9 |  | Edición con undo (Edit.js) | 3d | 2026-09-04 A | 2026-09-08 A | 8 | 100% |  |
| 10 |  | Guardar, cerrar y recientes | 2d | 2026-09-09 A | 2026-09-10 A | 9 | 100% |  |
| 11 |  | Hito: primer archivo guardado |  | 2026-09-10 A | 2026-09-10 A | 10 | 100% |  |
| 12 | 3 | **Fase 2 — Calendarios y CPM** | 9d | 2026-09-11 | 2026-09-23 |  |  |  |
| 13 |  | Calendarios, feriados y herencia | 3d | 2026-09-11 A | 2026-09-15 A | 11 | 100% |  |
| 14 |  | CPM forward/backward y criticidad | 4d | 2026-09-16 A | 2026-09-21 A | 13 | 100% |  |
| 15 |  | Los cuatro tipos de vínculo (0=FF) | 2d | 2026-09-22 A | 2026-09-23 A | 14 | 100% |  |
| 16 |  | Hito: 42/42 contra el archivo real |  | 2026-09-23 A | 2026-09-23 A | 15 | 100% |  |
| 17 | 4 | **Fase 3 — Editor completo** | 7d | 2026-09-24 | 2026-10-02 |  |  |  |
| 18 |  | Panel de propiedades (pestañas) | 3d | 2026-09-24 | 2026-09-28 | 16 |  |  |
| 19 |  | Configuración del plan y calendarios | 2d | 2026-09-29 | 2026-09-30 | 18 |  |  |
| 20 |  | Autosave y recuperación | 2d | 2026-10-01 | 2026-10-02 | 19 |  |  |
| 21 |  | Informe PDF (lib/report) | 2d | 2026-10-01 | 2026-10-02 | 19 |  |  |
| 22 |  | Hito: editor usable a diario |  | 2026-10-02 | 2026-10-02 | 20, 21 |  |  |
| 23 | 5 | **Fase 4 — Gantt interactivo** | 7d | 2026-10-05 | 2026-10-13 |  |  |  |
| 24 |  | Mover, estirar y enlazar | 3d | 2026-10-05 | 2026-10-07 | 22 |  |  |
| 25 |  | Elegir el tipo al dibujar | 1d | 2026-10-07 | 2026-10-07 | 24SS+2d |  |  |
| 26 |  | Línea base y seguimiento | 2d | 2026-10-08 | 2026-10-09 | 24 |  |  |
| 27 |  | Varias líneas base | 2d | 2026-10-12 | 2026-10-13 | 26 |  |  |
| 28 |  | Hito: Gantt completo |  | 2026-10-13 | 2026-10-13 | 27 |  |  |
| 29 | 6 | **Fase 5 — Recursos y costos** | 9d | 2026-10-14 | 2026-10-26 |  |  |  |
| 30 |  | Recursos y asignaciones | 3d | 2026-10-14 | 2026-10-16 | 28 |  |  |
| 31 |  | Costos por trabajo y material | 2d | 2026-10-19 | 2026-10-20 | 30 |  |  |
| 32 |  | Tablas de tasas por fecha | 2d | 2026-10-21 | 2026-10-22 | 31 |  |  |
| 33 |  | Editor de tasas (RatesForm) | 2d | 2026-10-23 | 2026-10-26 | 32 |  |  |
| 34 |  | Hito: costos confiables |  | 2026-10-26 | 2026-10-26 | 33 |  |  |
| 35 | 7 | **Fase 6 — Distribución** | 9d | 2026-11-02 | 2026-11-12 |  |  |  |
| 36 |  | Port de Bintana a Windows | 5d | 2026-11-02 | 2026-11-06 | 34 |  | start no earlier than 2026-11-02 |
| 37 |  | Manual de uso | 3d | 2026-11-04 | 2026-11-06 | 36SS+2d |  |  |
| 38 |  | Bundle .bta e instalador | 3d | 2026-11-09 | 2026-11-11 | 36 |  |  |
| 39 |  | Revisión final de fidelidad | 1d | 2026-11-11 | 2026-11-11 | 38FF |  |  |
| 40 |  | Prueba de aceptación en Project | 1d | 2026-11-12 | 2026-11-12 | 38 |  |  |
| 41 |  | Hito: 0.1 publicado |  | 2026-11-12 | 2026-11-12 | 38, 39, 40 |  |  |

## Version 2 (saved 2026-10-28)

Note of the change: los archivos que guarda Bintana abren en Project 2108

Last finish stays 2026-11-12.

Changed:

| ID | Task | Other |
| --- | --- | --- |
| 36 | Port de Bintana a Windows | resources Matías; Licencias y servicios [2 mes] → Matías; Licencias y servicios [2 licencia] |
